# caintegrator_project_plan_v3

Schedule from MS Project, 2011-08-01 to 2012-07-18, A marks actual dates.
NIH\NCI

## Calendars

- Standard: Mon-Fri 08:00-12:00, 13:00-17:00; Sat-Sun off. Exceptions (off unless hours are given): 2011-09-05.

## Resources

| Resource |
| --- |
| JP |
| TBH |
| SJ/JP |
| Qut |
| Quy |
| SJ |
| HS |
| Systems |
| MAX |
| system |
| Secuirity Team |

## Schedule

| ID | WBS | Task | Type | Duration | Start | Finish | Predecessors | Complete | Remaining | Total slack | Free slack | Constraint | Resources | Work | Actual work |
| --- | --- | --- | --- | --- | --- | --- | --- | --- | --- | --- | --- | --- | --- | --- | --- |
| 1 | 1 | **Adhoc Generic Support** |  | 16d | 2011-08-01 | 2011-08-22 |  |  |  | 236d |  |  |  |  |  |
| 2 | 1.1 | TCGA Data Support |  | 2d | 2011-08-01 | 2011-08-02 |  |  |  | 239.75d |  |  |  |  |  |
| 3 | 1.2 | TCGA Data on caIntegrator |  | 4d | 2011-08-17 | 2011-08-22 |  |  |  | 225.75d |  | start no earlier than 2011-08-17 |  |  |  |
| 4 | 1.3 | MATKC Support | milestone | 0d | 2011-08-01 | 2011-08-01 |  |  |  | 241.75d |  |  |  |  |  |
| 5 | 2 | **CaIntegrator Version 1.3.1** |  | 30d? | 2011-08-15 A | 2011-09-26 A |  | 100% |  |  |  |  |  | 120h | 120h |
| 6 | 2.1 | **JIRA CAINT-1011 508 Compliance** |  | 13d | 2011-08-15 A | 2011-08-31 A |  | 100% |  |  |  |  |  | 56h | 56h |
| 7 | 2.1.1 | Common Accenture Profile Dev/QA |  | 1d | 2011-08-15 A | 2011-08-15 A |  | 100% |  |  |  | start no earlier than 2011-08-15 | Quy | 8h | 8h |
| 8 | 2.1.2 | Identify 508 issues to be fixed and create JIRA user story tasks for each on DEV and QA. |  | 3d | 2011-08-22 A | 2011-08-24 A | 7 | 100% |  |  |  |  | JP | 24h | 24h |
| 9 | 2.1.3 | Fix TABLE tag in caBIO search form. |  | 0.5d | 2011-08-29 A | 2011-08-29 A | 8 | 100% |  |  |  |  | JP | 4h | 4h |
| 10 | 2.1.4 | Fix TABLE tag in gene list search form. |  | 0.5d | 2011-08-29 A | 2011-08-29 A | 9 | 100% |  |  |  |  | JP | 4h | 4h |
| 11 | 2.1.5 | Fix ALT tags in caBIO search form |  | 0.5d | 2011-08-30 A | 2011-08-30 A | 10 | 100% |  |  |  |  | JP | 4h | 4h |
| 12 | 2.1.6 | Fix ALT tags in study summary page |  | 0.5d | 2011-08-30 A | 2011-08-30 A | 11 | 100% |  |  |  |  | JP | 4h | 4h |
| 13 | 2.1.7 | Fix TABLE header in registeration page |  | 0.5d | 2011-08-31 A | 2011-08-31 A | 12 | 100% |  |  |  |  | JP | 4h | 4h |
| 14 | 2.1.8 | Fix TABLE in study summary page. |  | 0.5d | 2011-08-31 A | 2011-08-31 A | 13 | 100% |  |  |  |  | JP | 4h | 4h |
| 15 | 2.2 | **Ongoing maintenance and bug fixes** |  | 18d? | 2011-08-31 A | 2011-09-26 A |  | 100% |  |  |  |  |  | 64h | 64h |
| 16 | 2.2.1 | ADF platform issues |  | 2d | 2011-08-31 A | 2011-09-01 A |  | 100% |  |  |  | start no earlier than 2011-08-31 | JP | 16h | 16h |
| 17 | 2.2.2 | ECAT Prep |  | 2d | 2011-09-02 A | 2011-09-06 A | 16 | 100% |  |  |  |  | SJ; JP | 32h | 32h |
| 18 | 2.2.3 | prepare a point release for section 508 compliance. |  | 2d | 2011-09-19 A | 2011-09-20 A |  | 100% |  |  |  | start no earlier than 2011-09-19 | JP | 16h | 16h |
| 19 | 2.2.4 | Bug fix for typo error and new tag (RC2) |  | 1d? | 2011-09-26 A | 2011-09-26 A |  | 100% |  |  |  |  |  |  |  |
| 20 | 3 | QA RC1 |  | 7d | 2011-09-21 A | 2011-09-29 | 18 | 71% | 2d | 183d | 0d |  | HS | 56h | 40h |
| 21 | 4 | **JIRA-CAINT-1047 - Resolve Appscan Issues** |  | 8d | 2011-09-30 | 2011-10-11 |  |  |  | 1d | 0d |  | HS | 136h |  |
| 22 | 4.1 | Resolve existing medium issues |  | 2d | 2011-09-30 | 2011-10-03 | 20 |  |  | 185d |  |  | JP | 16h |  |
| 23 | 4.2 | Run Appscan |  | 1d | 2011-10-03 | 2011-10-03 |  |  |  | 0d |  | start no earlier than 2011-10-03 | Secuirity Team | 8h |  |
| 24 | 4.3 | Address all medium/high issues |  | 3d | 2011-10-04 | 2011-10-06 | 23 |  |  | 0d |  |  | JP | 24h |  |
| 25 | 4.4 | New Appscan |  | 3d | 2011-10-07 | 2011-10-11 | 24 |  |  | 0d |  |  | JP | 24h |  |
| 26 | 5 | QA RC3 |  | 5d | 2011-10-12 | 2011-10-18 | 21 |  |  | 179d | 0d |  | HS | 40h |  |
| 27 | 6 | Release - Stage/QA/Prod/QA |  | 7d | 2011-10-19 | 2011-10-27 | 26 |  |  | 179d |  |  | Systems | 56h |  |

| ID | WBS | Task | Duration | Start | Finish | Predecessors | Complete | Remaining | Total slack | Free slack | Constraint | Resources | Work | Actual work |
| --- | --- | --- | --- | --- | --- | --- | --- | --- | --- | --- | --- | --- | --- | --- |
| 28 | 7 | **CaIntegrator Version 1.4** | 150d | 2011-08-01 A | 2012-02-27 |  | 8% | 138.54d | 102d |  |  |  | 936h | 72h |
| 29 | 7.1 | Version 1.4 planning/priortization | 2d | 2011-08-01 A | 2011-08-02 A |  | 100% |  |  |  |  |  |  |  |
| 30 | 7.2 | **JIRA CAINT-1015 Tech Stack Upgrade** | 65d | 2011-08-03 A | 2011-11-02 | 29 | 30% | 45.5d | 185d |  |  |  | 240h | 72h |
| 31 | 7.2.1 | Planning | 2d | 2011-08-03 A | 2011-08-04 A |  | 100% |  |  |  |  | JP | 16h | 16h |
| 32 | 7.2.2 | CI to Jenkins | 2d | 2011-09-07 A | 2011-09-08 A | 31, 49 | 100% |  |  |  |  | JP | 16h | 16h |
| 33 | 7.2.3 | ANT 1.8 | 3d | 2011-09-09 A | 2011-09-13 A | 32 | 100% |  |  |  |  | JP | 24h | 24h |
| 34 | 7.2.4 | Support for Version 1.3.1 RC1 | 2d | 2011-09-20 A | 2011-09-21 A | 18 | 100% |  |  |  |  | JP | 16h | 16h |
| 35 | 7.2.5 | JIRA CAINT-1015 Migration from nexus | 5d | 2011-10-06 | 2011-10-12 | 33 |  |  | 190d |  |  | MAX | 40h |  |
| 36 | 7.2.6 | JIRA CAINT-1015 Upgrade build for Anthill Pro 3, JBOSS upgrade | 16d | 2011-10-12 | 2011-11-02 | 34, 50, 25 |  |  | 0d |  |  | JP | 128h |  |
| 37 | 7.3 | **TRANSCEND Support** | 44d | 2011-08-01 | 2011-09-30 |  |  |  | 208d |  |  |  | 152h |  |
| 38 | 7.3.1 | Refine requirements | 5d | 2011-09-26 | 2011-09-30 |  |  |  | 198d |  | start no earlier than 2011-09-26 |  |  |  |
| 39 | 7.3.2 | JIRA CAINT-998 -Version control (create shell study) | 14d | 2011-08-01 | 2011-08-18 |  |  |  | 223d | 0d |  | MAX | 112h |  |
| 40 | 7.3.3 | JIRA CAINT-998 Version control (Archive) | 5d | 2011-08-19 | 2011-08-25 | 39 |  |  | 223d |  |  | MAX | 40h |  |
| 41 | 7.4 | **JIRA-CAINT-966 - Generic Platform Support** | 43d | 2011-11-03 | 2012-01-02 |  |  |  | 0d |  |  |  | 344h |  |
| 42 | 7.4.1 | Create new generic platform model by extending expression platform. | 8d | 2011-11-03 | 2011-11-14 | 36 |  |  | 0d |  |  | JP | 64h |  |
| 43 | 7.4.2 | Modify the generic platform loader to accept MAGE-TAB. | 5d | 2011-11-15 | 2011-11-21 | 42 |  |  | 0d |  |  | JP | 40h |  |
| 44 | 7.4.3 | Modify the study deployment process to load the new platform data from caArray. | 8d | 2011-11-22 | 2011-12-01 | 43 |  |  | 0d |  |  | JP | 64h |  |
| 45 | 7.4.4 | modify front-end analysis tools to show a new title according to platform type. | 3d | 2011-12-02 | 2011-12-06 | 44 |  |  | 0d |  |  | JP | 24h |  |
| 46 | 7.4.5 | Modify the Query interface to allow selection of a generic expression data type. | 14d | 2011-12-07 | 2011-12-26 | 45 |  |  | 0d |  |  | JP | 112h |  |
| 47 | 7.4.6 | Modify front-end for IGV and heatmap to display a selector for choosing a generic expression data type. | 5d | 2011-12-27 | 2012-01-02 | 46 |  |  | 0d |  |  | JP | 40h |  |
| 48 | 7.5 | **Ongoing maintenance and bug fixes** | 19d | 2011-08-31 | 2011-09-27 |  |  |  | 26d |  |  |  | 40h |  |
| 49 | 7.5.1 | ADF platform issues | 2d | 2011-08-31 | 2011-09-01 |  |  |  | 218d |  | start no earlier than 2011-08-31 | JP | 16h |  |
| 50 | 7.5.2 | Data issues with training tier | 3d | 2011-09-23 | 2011-09-27 |  |  |  | 10d |  | start no earlier than 2011-09-23 | JP | 24h |  |
| 51 | 7.6 | QA | 20d | 2012-01-03 | 2012-01-30 | 41 |  |  | 0d |  |  | HS | 160h |  |
| 52 | 7.7 | Documentation | 10d | 2012-01-31 | 2012-02-13 | 51 |  |  | 102d | 0d |  |  |  |  |
| 53 | 7.8 | Appscan/Stage/Prod release | 10d | 2012-02-14 | 2012-02-27 | 52 |  |  | 102d |  |  |  |  |  |

| ID | WBS | Task | Duration | Start | Finish | Predecessors | Total slack | Free slack | Resources | Work |
| --- | --- | --- | --- | --- | --- | --- | --- | --- | --- | --- |
| 54 | 8 | **CaIntegrator Version 1.5** | 252d? | 2011-08-01 | 2012-07-18 |  | 0d |  |  | 1280h |
| 55 | 8.1 | Version 1.5 planning/priortization | 2d | 2012-01-31 | 2012-02-01 | 51 | 0d |  |  |  |
| 56 | 8.2 | **TRANSCEND Support** | 212d? | 2011-08-01 | 2012-05-23 |  | 40d |  |  | 1120h |
| 57 | 8.2.1 | JIRA CAINT-998 - TRANSCEND Permissions Support | 40d | 2012-02-02 | 2012-03-28 | 55 | 0d |  | JP | 320h |
| 58 | 8.2.2 | JIRA CAINT-998 Automatic Refresh | 40d | 2012-02-02 | 2012-03-28 | 55 | 60d | 0d | TBH | 320h |
| 59 | 8.2.3 | JIRA CAINT-998 Single Sign-on | 40d | 2012-03-29 | 2012-05-23 | 57 | 0d |  | TBH | 320h |
| 60 | 8.2.4 | JIRA CAINT-49 Integrate with private studies in NBIA | 20d | 2012-03-29 | 2012-04-25 | 58 | 60d |  | JP | 160h |
| 61 | 8.2.5 | JIRA CAINT-1045 Performance Requirements | 1d? | 2011-08-01 | 2011-08-01 |  | 251d |  |  |  |
| 62 | 8.3 | JIRA CAINT-1041 - Support NCI Funded Studies Deployment | 20d | 2012-05-24 | 2012-06-20 | 59 | 0d |  | TBH | 160h |
| 63 | 8.4 | QA | 20d | 2012-06-21 | 2012-07-18 | 62 | 0d |  |  |  |
| 64 | 8.5 | Documentation | 10d | 2012-06-21 | 2012-07-04 | 62 | 0d |  |  |  |
| 65 | 8.6 | Appscan/Stage/Prod release | 10d | 2012-07-05 | 2012-07-18 | 64 | 0d |  |  |  |
